# Plan de proyecto

Schedule from MS Project, 2018-10-22 to 2018-11-21, status date 2018-10-25, costs in $, A marks actual dates.

## Calendars

- Estándar: Mon-Fri 09:00-13:00, 15:00-19:00; Sat-Sun off. Exceptions (off unless hours are given): 2018-11-03 to 2018-11-04 09:00-13:00, 15:00-19:00.

## Resources

| Resource | Group | Rate |
| --- | --- | --- |
| Juan Carlos Domínguez Domínguez | 3 | 30 |
| Alberto Hernández Gómez | 3 | 30 |
| Kevín Yaír Hernández Macías | 3 | 30 |
| Carlos Alberto Onorio Torres | 3 | 30 |

## Schedule

| ID | WBS | Task | Duration | Start | Finish | Predecessors | Complete | Remaining | Baseline start | Baseline finish | Baseline duration | Baseline 1 start | Baseline 1 finish | Total slack | Free slack | Constraint | Resources | Work | Actual work | Cost | Baseline cost | Actual cost |
| --- | --- | --- | --- | --- | --- | --- | --- | --- | --- | --- | --- | --- | --- | --- | --- | --- | --- | --- | --- | --- | --- | --- |
| 1 | 1 | **Aplicación para la Movilidad en el Transporte Público Urbano** | 25d | 2018-10-22 A | 2018-11-21 |  | 83% | 4.29d | 2018-10-22 | 2018-11-21 | 23d | 2018-10-22 | 2018-11-21 | 0d |  |  |  | 524h | 428h | 15,720 | 17,520 | 12,840 |
| 2 | 1.1 | **Definición de artefactos** | 10d | 2018-10-22 A | 2018-11-02 A |  | 100% |  | 2018-10-22 | 2018-11-01 | 9d | 2018-10-22 | 2018-11-02 |  |  |  |  | 88h | 88h | 2,640 | 2,880 | 2,640 |
| 3 | 1.1.1 | Solicitud de desarrollo de software | 1d | 2018-10-22 A | 2018-10-22 A |  | 100% |  | 2018-10-22 | 2018-10-22 | 1d | 2018-10-22 | 2018-10-22 |  |  | start no earlier than 2018-10-22 | Carlos Alberto Onorio Torres | 8h | 8h | 240 | 240 | 240 |
| 4 | 1.1.2 | Análisis de factibilidad | 2d | 2018-10-23 A | 2018-10-24 A | 3 | 100% |  | 2018-10-23 | 2018-10-24 | 2d | 2018-10-23 | 2018-10-24 |  |  |  | Alberto Hernández Gómez | 16h | 16h | 480 | 480 | 480 |
| 5 | 1.1.3 | Plan de gestión de riesgos | 3d | 2018-10-25 A | 2018-10-29 A | 4 | 100% |  | 2018-10-25 | 2018-10-26 | 2d | 2018-10-25 | 2018-10-29 |  |  |  | Kevín Yaír Hernández Macías | 24h | 24h | 720 | 480 | 720 |
| 6 | 1.1.4 | Plan de medición | 2d | 2018-10-30 A | 2018-10-31 A | 5 | 100% |  | 2018-10-29 | 2018-10-31 | 3d | 2018-10-30 | 2018-10-31 |  |  | finish no earlier than 2018-10-31 | Juan Carlos Domínguez Domínguez | 16h | 16h | 480 | 720 | 480 |
| 7 | 1.1.5 | Plan de calidad | 2d | 2018-11-01 A | 2018-11-02 A |  | 100% |  | 2018-10-29 | 2018-10-31 | 3d | 2018-11-01 | 2018-11-02 |  |  | start no earlier than 2018-11-01 | Carlos Alberto Onorio Torres | 16h | 16h | 480 | 720 | 480 |
| 8 | 1.1.6 | Plan de administración y control de cambio | 1d | 2018-11-02 A | 2018-11-02 A |  | 100% |  | 2018-11-01 | 2018-11-01 | 1d | 2018-11-02 | 2018-11-02 |  |  | finish no earlier than 2018-11-02 | Carlos Alberto Onorio Torres | 8h | 8h | 240 | 240 | 240 |
| 9 | 1.2 | **Requerimientos** | 6d | 2018-11-03 A | 2018-11-08 A |  | 100% |  | 2018-11-01 | 2018-11-12 | 8d | 2018-11-03 | 2018-11-08 |  |  |  |  | 308h | 308h | 9,240 | 10,320 | 9,240 |
| 10 | 1.2.1 | Resultado de análisis documental | 2d | 2018-11-03 A | 2018-11-04 A |  | 100% |  | 2018-11-01 | 2018-11-02 | 2d | 2018-11-03 | 2018-11-04 |  |  | start no earlier than 2018-11-03 | Alberto Hernández Gómez; Juan Carlos Domínguez Domínguez; Kevín Yaír Hernández Macías | 48h | 48h | 1,440 | 1,920 | 1,440 |
| 11 | 1.2.2 | Prototipo no funcional | 2d | 2018-11-03 A | 2018-11-04 A |  | 100% |  | 2018-11-01 | 2018-11-02 | 2d | 2018-11-03 | 2018-11-04 |  |  | start no earlier than 2018-11-03 | Alberto Hernández Gómez; Juan Carlos Domínguez Domínguez; Kevín Yaír Hernández Macías; Carlos Alberto Onorio Torres | 48h | 48h | 1,440 | 1,920 | 1,440 |
| 12 | 1.2.3 | Diagrama de casos de uso | 1d | 2018-11-05 A | 2018-11-05 A | 10, 11 | 100% |  | 2018-11-05 | 2018-11-05 | 1d | 2018-11-05 | 2018-11-05 |  |  |  | Carlos Alberto Onorio Torres | 8h | 8h | 240 | 240 | 240 |
| 13 | 1.2.4 | Descripción de casos de uso | 3d | 2018-11-05 A | 2018-11-07 A | 10, 11 | 100% |  | 2018-11-05 | 2018-11-07 | 3d | 2018-11-05 | 2018-11-07 |  |  |  | Alberto Hernández Gómez; Carlos Alberto Onorio Torres; Juan Carlos Domínguez Domínguez; Kevín Yaír Hernández Macías | 96h | 96h | 2,880 | 2,880 | 2,880 |
| 14 | 1.2.5 | Especificación de requerimientos | 2d | 2018-11-07 A | 2018-11-08 A |  | 100% |  | 2018-11-08 | 2018-11-09 | 2d | 2018-11-07 | 2018-11-08 |  |  | start no earlier than 2018-11-07 | Juan Carlos Domínguez Domínguez | 16h | 16h | 480 | 480 | 480 |
| 15 | 1.2.6 | **Evaluación de requerimientos** | 1.5d | 2018-11-07 A | 2018-11-08 A | 13, 16 | 100% |  | 2018-11-08 | 2018-11-09 | 2d | 2018-11-07 | 2018-11-08 |  |  |  | Alberto Hernández Gómez; Carlos Alberto Onorio Torres; Juan Carlos Domínguez Domínguez; Kevín Yaír Hernández Macías | 76h | 76h | 2,280 | 2,400 | 2,280 |
| 16 | 1.2.6.1 | Checklist de requerimientos | 1d | 2018-11-07 A | 2018-11-07 A |  | 100% |  | 2018-11-08 | 2018-11-08 | 1d | 2018-11-07 | 2018-11-07 |  |  | start no earlier than 2018-11-07 | Carlos Alberto Onorio Torres | 8h | 8h | 240 | 240 | 240 |
| 17 | 1.2.6.2 | Reporte de aplicación del checklist de requerimientos | 1d | 2018-11-07 A | 2018-11-08 A | 16 | 100% |  | 2018-11-09 | 2018-11-09 | 1d | 2018-11-07 | 2018-11-08 |  |  |  | Alberto Hernández Gómez; Carlos Alberto Onorio Torres; Juan Carlos Domínguez Domínguez; Kevín Yaír Hernández Macías | 20h | 20h | 600 | 240 | 600 |
| 18 | 1.2.7 | Estimación de esfuerzo TCPU | 2d | 2018-11-07 A | 2018-11-08 A |  | 100% |  | 2018-11-09 | 2018-11-12 | 2d | 2018-11-07 | 2018-11-08 |  |  | start no earlier than 2018-11-07 | Juan Carlos Domínguez Domínguez | 16h | 16h | 480 | 480 | 480 |
| 19 | 1.3 | **Análisis/Diseño** | 5d | 2018-11-12 A | 2018-11-16 |  | 67% | 1.67d | 2018-11-12 | 2018-11-19 | 6d | 2018-11-12 | 2018-11-19 | 3d |  |  |  | 72h | 32h | 2,160 | 3,120 | 960 |
| 20 | 1.3.1 | Modelo de dominio | 2d | 2018-11-12 A | 2018-11-13 A |  | 100% |  | 2018-11-12 | 2018-11-13 | 2d | 2018-11-12 | 2018-11-13 |  |  | start no earlier than 2018-11-12 | Carlos Alberto Onorio Torres | 16h | 16h | 480 | 480 | 480 |
| 21 | 1.3.2 | Diagrama de robustez | 1d | 2018-11-14 A | 2018-11-14 A | 20 | 100% |  | 2018-11-14 | 2018-11-14 | 1d | 2018-11-14 | 2018-11-14 |  |  |  | Juan Carlos Domínguez Domínguez | 8h | 8h | 240 | 240 | 240 |
| 22 | 1.3.3 | Modelo de dominio actualizado | 1d | 2018-11-14 A | 2018-11-14 A | 20 | 100% |  | 2018-11-14 | 2018-11-14 | 1d | 2018-11-14 | 2018-11-14 |  |  | start no earlier than 2018-11-14 | Juan Carlos Domínguez Domínguez | 8h | 8h | 240 | 240 | 240 |
| 23 | 1.3.4 | **Evaluación de diseño** | 2d | 2018-11-15 | 2018-11-16 |  |  |  | 2018-11-16 | 2018-11-19 | 2d | 2018-11-16 | 2018-11-19 | 3d |  |  |  | 40h |  | 1,200 | 1,200 |  |
| 24 | 1.3.4.1 | Checklist de diseño | 1d | 2018-11-15 | 2018-11-15 |  |  |  | 2018-11-16 | 2018-11-16 | 1d | 2018-11-16 | 2018-11-16 | 3d | 0d | start no earlier than 2018-11-15 | Carlos Alberto Onorio Torres | 8h |  | 240 | 240 |  |
| 25 | 1.3.4.2 | Reporte de aplicación del checklist de diseño | 1d | 2018-11-16 | 2018-11-16 | 24 |  |  | 2018-11-19 | 2018-11-19 | 1d | 2018-11-19 | 2018-11-19 | 3d |  |  | Alberto Hernández Gómez; Carlos Alberto Onorio Torres; Juan Carlos Domínguez Domínguez; Kevín Yaír Hernández Macías | 32h |  | 960 | 960 |  |

| ID | WBS | Task | Duration | Start | Finish | Predecessors | Baseline start | Baseline finish | Baseline duration | Baseline 1 start | Baseline 1 finish | Total slack | Constraint | Resources | Work | Cost | Baseline cost |
| --- | --- | --- | --- | --- | --- | --- | --- | --- | --- | --- | --- | --- | --- | --- | --- | --- | --- |
| 26 | 1.4 | **Cierre** | 3d | 2018-11-19 | 2018-11-21 |  | 2018-11-20 | 2018-11-21 | 2d | 2018-11-20 | 2018-11-21 | 0d |  |  | 56h | 1,680 | 1,200 |
| 27 | 1.4.1 | Reporte de revisión de artefactos de planeación | 1d | 2018-11-19 | 2018-11-19 |  |  |  |  |  |  | 2d | start no earlier than 2018-11-19 | Kevín Yaír Hernández Macías | 8h | 240 |  |
| 28 | 1.4.2 | Reporte de revisión de artefactos de requerimientos | 1d | 2018-11-20 | 2018-11-20 |  |  |  |  |  |  | 1d | start no earlier than 2018-11-20 | Juan Carlos Domínguez Domínguez | 8h | 240 |  |
| 29 | 1.4.3 | Portafolio de proyecto | 1d | 2018-11-20 | 2018-11-20 |  | 2018-11-20 | 2018-11-20 | 1d | 2018-11-20 | 2018-11-20 | 0d | start no earlier than 2018-11-20 | Kevín Yaír Hernández Macías | 8h | 240 | 240 |
| 30 | 1.4.4 | Presentación de proyecto | 1d | 2018-11-21 | 2018-11-21 | 29 | 2018-11-21 | 2018-11-21 | 1d | 2018-11-21 | 2018-11-21 | 0d |  | Alberto Hernández Gómez; Carlos Alberto Onorio Torres; Juan Carlos Domínguez Domínguez; Kevín Yaír Hernández Macías | 32h | 960 | 960 |
